# The Puzzler - 3D Style Project

Schedule from MS Project, 2005-01-03 to 2005-06-10, status date 2005-01-25, A marks actual dates.
Hedron Inc.

## Calendars

- Standard: Mon-Fri 08:00-12:00, 13:00-17:00; Sat-Sun off.

## Schedule

| ID | WBS | Task | Type | Duration | Start | Finish | Predecessors | Complete | Remaining | Baseline start | Baseline finish | Baseline duration | Total slack | Free slack | Constraint |
| --- | --- | --- | --- | --- | --- | --- | --- | --- | --- | --- | --- | --- | --- | --- | --- |
| 1 | 1 | Start Beta Implementation Phase | milestone | 0d | 2005-01-03 | 2005-01-03 |  |  |  | 2005-01-03 | 2005-01-03 | 0d | 0d |  | must start on 2005-01-03 |
| 2 | 2 | **First iterative release** |  | 20d | 2005-01-03 A | 2005-01-28 |  | 55% | 9d | 2005-01-03 | 2005-01-28 | 20d | 93d |  |  |
| 3 | 2.1 | Write and test code for the Red-Black Tree object |  | 8d | 2005-01-03 A | 2005-01-12 A | 1 | 100% |  | 2005-01-03 | 2005-01-12 | 8d |  |  | start no earlier than 2005-01-03 |
| 4 | 2.2 | Write and test code for the PuzzleCreator object |  | 8d | 2005-01-13 A | 2005-01-24 | 3 | 25% | 6d | 2005-01-13 | 2005-01-24 | 8d | 94d | 0d |  |
| 5 | 2.3 | Integration Test Red-Black Tree and Puzzle Creator |  | 4d | 2005-01-25 A | 2005-01-28 | 4 | 25% | 3d | 2005-01-25 | 2005-01-28 | 4d | 93d | 0d |  |
| 6 | 3 | **Second iterative release** |  | 24d | 2005-01-31 A | 2005-03-03 |  | 58% | 10d | 2005-01-31 | 2005-03-03 | 24d | 71d |  |  |
| 7 | 3.1 | Build Generating Puzzle Screen ASP.NET Page |  | 2d | 2005-01-31 | 2005-02-01 | 5 |  |  | 2005-01-31 | 2005-02-01 | 2d | 93d |  |  |
| 8 | 3.2 | Write and test code for the DictionaryCreator object |  | 8d | 2005-02-02 A | 2005-02-11 A | 7 | 100% |  | 2005-02-02 | 2005-02-11 | 8d |  |  |  |
| 9 | 3.3 | Write and test code for the Solution object |  | 8d | 2005-02-14 A | 2005-02-23 | 8 | 25% | 6d | 2005-02-14 | 2005-02-23 | 8d | 77d |  |  |
| 10 | 3.4 | Integration Test DictionaryCreator and Solution objects |  | 4d | 2005-02-24 A | 2005-03-01 A | 9 | 100% |  | 2005-02-24 | 2005-03-01 | 4d |  |  |  |
| 11 | 3.5 | Build and Integrate with the Main UI ASP.NET Page |  | 2d | 2005-03-02 | 2005-03-03 | 10 |  |  | 2005-03-02 | 2005-03-03 | 2d | 9d | 0d |  |
| 12 | 4 | **Third iterative release** |  | 24d | 2005-03-04 | 2005-04-06 |  |  |  | 2005-03-04 | 2005-04-06 | 24d | 9d |  |  |
| 13 | 4.1 | Build Puzzle Config Puzzle/Welcome Screen ASP.NET Page |  | 2d | 2005-03-04 | 2005-03-07 | 11 |  |  | 2005-03-04 | 2005-03-07 | 2d | 9d | 0d |  |
| 14 | 4.2 | Build Review Configuration Screen ASP.NET Page |  | 2d | 2005-03-08 | 2005-03-09 | 13 |  |  | 2005-03-08 | 2005-03-09 | 2d | 9d | 0d |  |
| 15 | 4.3 | Write and test code for the PuzzleConfig object |  | 7d | 2005-03-10 | 2005-03-18 | 14 |  |  | 2005-03-10 | 2005-03-18 | 7d | 9d | 0d |  |
| 16 | 4.4 | Write and test code for the ManageDB |  | 10d | 2005-03-21 | 2005-04-01 | 15 |  |  | 2005-03-21 | 2005-04-01 | 10d | 9d | 0d |  |
| 17 | 4.5 | Integration Test the PuzzleConfig and ManageDB objects |  | 3d | 2005-04-04 | 2005-04-06 | 16 |  |  | 2005-04-04 | 2005-04-06 | 3d | 9d | 0d |  |
| 18 | 5 | **Fourth iterative release** |  | 20d | 2005-04-07 | 2005-05-04 |  |  |  | 2005-04-07 | 2005-05-04 | 20d | 9d |  |  |
| 19 | 5.1 | Write and test code for the ManageStats object |  | 8d | 2005-04-07 | 2005-04-18 | 17 |  |  | 2005-04-07 | 2005-04-18 | 8d | 9d | 0d |  |
| 20 | 5.2 | Integration Test the ManageStats Object |  | 4d | 2005-04-19 | 2005-04-22 | 19 |  |  | 2005-04-19 | 2005-04-22 | 4d | 9d | 0d |  |
| 21 | 5.3 | Build the Help object and Documentation ASP.NET Page |  | 6d | 2005-04-25 | 2005-05-02 | 20 |  |  | 2005-04-25 | 2005-05-02 | 6d | 9d | 0d |  |
| 22 | 5.4 | Build "Thanks for Visiting!" ASP.NET Page |  | 2d | 2005-05-03 | 2005-05-04 | 21 |  |  | 2005-05-03 | 2005-05-04 | 2d | 9d | 0d |  |
| 23 | 6 | **Fith iterative release** |  | 18d | 2005-05-05 | 2005-05-30 |  |  |  | 2005-05-05 | 2005-05-30 | 18d | 9d |  |  |
| 24 | 6.1 | Move DB to non-local domain/website (stretch goal #1) |  | 9d | 2005-05-05 | 2005-05-17 | 22 |  |  | 2005-05-05 | 2005-05-17 | 9d | 9d | 0d | start no earlier than 2005-04-22 |
| 25 | 6.2 | Add word circling/highliting capability (stretch goal #2) |  | 9d | 2005-05-18 | 2005-05-30 | 24 |  |  | 2005-05-18 | 2005-05-30 | 9d | 9d |  |  |
| 26 | 7 | Finish Beta Final Release | milestone | 0d | 2005-06-10 | 2005-06-10 | 25 |  |  | 2005-06-10 | 2005-06-10 | 0d | 0d |  | must finish on 2005-06-10 |
