# Super DaVaR Upgrade Project

Schedule from MS Project, 2002-12-22 to 2004-06-30, status date 2003-12-09, costs in $, A marks actual dates.
Student

## Calendars

- Standard: Mon-Fri 08:00-12:00, 13:00-17:00; Sat-Sun off.

## Resources

| Resource | Group | Rate |
| --- | --- | --- |
| Ken Koch | Management | 5596800 |
| Ivan Davis | Management | 22 |
| Cynthia Parker | Management | 22 |
| Alan Lundy | Management | 22 |
| Joe | Fluke Networks - Software Development | 44 |
| Alice | Fluke Networks - Software Development | 44 |
| Fred | Fluke Networks - Software Development | 44 |
| Nancy | Fluke Networks - Software Development | 44 |
| Todd | Fluke Networks - Software Development | 44 |
| Robbert | Fluke Networks - Software Development | 44 |
| Nicholai | Fluke Networks - Software Development | 44 |
| Mike | Fluke Networks - Software Development | 44 |
| Michael | Fluke Networks - Software Development | 44 |
| John | Fluke Networks - Software Development | 44 |
| James | Fluke Networks - Hardware Development | 33 |
| Howard | Fluke Networks - Hardware Development | 33 |
| Evlin | Fluke Networks - Hardware Development | 33 |
| Joann | Fluke Networks - Hardware Development | 33 |
| William | Fluke Networks - Hardware Development | 33 |
| Jeff | Fluke Networks - Hardware Development | 33 |
| Richard | Fluke Networks - Hardware Development | 33 |
| Amy | Fluke Networks - Hardware Development | 33 |
| Greg | Fluke Networks - Hardware Development | 33 |
| Johnathan | Fluke Networks - Hardware Development | 33 |
| Mitch | Occupational - DaVaR Technician | 22 |
| Eric | Occupational - DaVaR Technician | 22 |
| Gabriel | Occupational - DaVaR Technician | 22 |
| Scott | Occupational - DaVaR Technician | 22 |
| James | Occupational - DaVaR Technician | 22 |
| Nichole | Occupational - DaVaR Technician | 22 |
| Marcus | Occupational - DaVaR Technician | 22 |
| Mark | Occupational - DaVaR Technician | 22 |
| Kathy | Occupational - DaVaR Technician | 22 |
| Simon | Management | 22 |
| Software Component Puchases |  | 674964 |
| Seven new DaVaR Hardware Purchases at $31875 dollars each plus tax |  | 223125 |
| Matt Klump | Occupational - Qwest Engineer | 22 |

## Schedule

| ID | WBS | Task | Type | Duration | Start | Finish | Predecessors | Complete | Remaining | Baseline start | Baseline finish | Baseline duration | Total slack | Constraint | Resources | Work | Actual work | Cost | Baseline cost | Actual cost |
| --- | --- | --- | --- | --- | --- | --- | --- | --- | --- | --- | --- | --- | --- | --- | --- | --- | --- | --- | --- | --- |
| 1 | 1 | **Initiating** |  | 17d | 2002-12-22 A | 2003-01-14 A |  | 100% |  | 2003-10-29 | 2003-11-24 | 19d |  |  |  | 744h | 744h | 13,376 | 13,376 | 13,376 |
| 2 | 1.1 | Select project manager |  | 1w | 2002-12-22 A | 2002-12-27 A |  | 100% |  | 2003-10-29 | 2003-11-04 | 1w |  | start no earlier than 2003-05-06 | Ken Koch; Ivan Davis; Cynthia Parker; Alan Lundy | 160h | 160h | 3,520 | 3,520 | 3,520 |
| 3 | 1.2 | Select project team |  | 2w | 2002-12-27 A | 2003-01-09 A | 2 | 100% |  | 2003-11-05 | 2003-11-18 | 2w |  |  | Ken Koch; Ivan Davis; Cynthia Parker; Alan Lundy | 320h | 320h | 7,040 | 7,040 | 7,040 |
| 4 | 1.3 | Develop project charter |  | 4d | 2003-01-09 A | 2003-01-14 A | 3 | 100% |  | 2003-11-19 | 2003-11-24 | 4d |  |  | Ken Koch; Ivan Davis; Cynthia Parker; Alan Lundy | 128h | 128h | 2,816 | 2,816 | 2,816 |
| 5 | 1.4 | Finished with Project Team Assembly | milestone | 0d | 2003-01-14 A | 2003-01-14 A | 4 | 100% |  |  |  |  |  | start no earlier than 2003-05-30 |  |  |  |  |  |  |
| 6 | 2 | **Planning** |  | 7d | 2003-01-14 A | 2003-01-23 A |  | 100% |  | 2003-11-25 | 2003-12-03 | 7d |  |  |  | 224h | 224h | 4,928 | 4,928 | 4,928 |
| 7 | 2.1 | Develop scope statement |  | 4d | 2003-01-14 A | 2003-01-20 A | 5 | 100% |  | 2003-11-25 | 2003-11-28 | 4d |  |  | Ken Koch; Ivan Davis; Cynthia Parker; Alan Lundy | 128h | 128h | 2,816 | 2,816 | 2,816 |
| 8 | 2.2 | Finalize this Work Break Structure/Schedule |  | 3d | 2003-01-20 A | 2003-01-23 A | 7 | 100% |  | 2003-12-01 | 2003-12-03 | 3d |  |  | Ken Koch; Ivan Davis; Cynthia Parker; Alan Lundy | 96h | 96h | 2,112 | 2,112 | 2,112 |
| 9 | 2.3 | Finished with Project Execution Planning Phase | milestone | 0d | 2003-01-23 A | 2003-01-23 A | 8 | 100% |  |  |  |  |  | start no earlier than 2003-06-10 |  |  |  |  |  |  |
| 10 | 3 | **Executing - Begin Work** |  | 359.5d | 2003-01-23 A | 2004-06-10 | 6 | 76% | 84.8d | 2003-11-19 | 2004-09-10 | 213d | 14d |  |  | 19756h | 11400h | 1,574,281 | 613,008 | 1,254,137 |
| 11 | 3.1 | **Concept execution phase** |  | 43d | 2003-01-23 A | 2003-03-25 A | 3 | 100% |  | 2003-11-19 | 2004-01-02 | 33d |  |  |  | 1992h | 1992h | 973,241 | 75,152 | 973,241 |
| 12 | 3.1.1 | Evaluate current client work stations |  | 2d | 2003-01-23 A | 2003-01-27 A |  | 100% |  | 2003-11-19 | 2003-11-20 | 2d |  |  | Joe; Alice; Fred; Nancy; Todd; Robbert; James; Howard; Joann; William; Jeff | 176h | 176h | 6,864 | 6,864 | 6,864 |
| 13 | 3.1.2 | Evaluate current server system |  | 3d | 2003-01-27 A | 2003-01-30 A | 12 | 100% |  | 2003-11-21 | 2003-11-25 | 3d |  |  | Joe; Alice; Fred; Nancy; Todd; Robbert; James; Howard; Joann; William; Jeff | 264h | 264h | 10,296 | 10,296 | 10,296 |
| 14 | 3.1.3 | **Define Implementation requirements** |  | 12d | 2003-01-30 A | 2003-02-17 A |  | 100% |  | 2003-11-26 | 2003-12-11 | 12d |  |  |  | 768h | 768h | 29,832 | 29,832 | 29,832 |
| 15 | 3.1.3.1 | Define user requirements |  | 3d | 2003-01-30 A | 2003-02-04 A | 13 | 100% |  | 2003-11-26 | 2003-11-28 | 3d |  |  | Joe; Alice; Fred; Nancy; Todd; Robbert; James; Howard; Joann; William; Jeff | 264h | 264h | 10,296 | 10,296 | 10,296 |
| 16 | 3.1.3.2 | Define software requirements |  | 3d | 2003-02-04 A | 2003-02-07 A | 15 | 100% |  | 2003-12-01 | 2003-12-03 | 3d |  |  | Alice; Joe; Fred; Nancy; Todd | 120h | 120h | 5,280 | 5,280 | 5,280 |
| 17 | 3.1.3.3 | Define hardware requirements |  | 3d | 2003-02-07 A | 2003-02-12 A | 16 | 100% |  | 2003-12-04 | 2003-12-08 | 3d |  |  | James; Howard; Evlin; Joann; William | 120h | 120h | 3,960 | 3,960 | 3,960 |
| 18 | 3.1.3.4 | Define server owner requirements |  | 3d | 2003-02-12 A | 2003-02-17 A | 17 | 100% |  | 2003-12-09 | 2003-12-11 | 3d |  |  | Alice; Joe; Fred; Nancy; Todd; Robbert; James; Howard; Joann; William; Jeff | 264h | 264h | 10,296 | 10,296 | 10,296 |
| 19 | 3.1.4 | **Define specific functionality** |  | 10d | 2003-02-17 A | 2003-03-03 A |  | 100% |  | 2003-12-12 | 2003-12-25 | 10d |  |  |  | 480h | 480h | 18,480 | 18,480 | 18,480 |
| 20 | 3.1.4.1 | Define specific software functionality |  | 1w | 2003-02-17 A | 2003-02-24 A | 18 | 100% |  | 2003-12-12 | 2003-12-18 | 1w |  |  | Joe; Alice; Fred; Nancy; Todd; Robbert | 240h | 240h | 10,560 | 10,560 | 10,560 |
| 21 | 3.1.4.2 | Define specific hardware functionality |  | 1w | 2003-02-24 A | 2003-03-03 A | 20 | 100% |  | 2003-12-19 | 2003-12-25 | 1w |  |  | James; Howard; Evlin; Joann; William; Jeff | 240h | 240h | 7,920 | 7,920 | 7,920 |
| 22 | 3.1.5 | Finalize plan for execution |  | 2d | 2003-03-03 A | 2003-03-05 A | 21 | 100% |  | 2003-12-26 | 2003-12-29 | 2d |  |  | Joe; Alice; Fred; Nancy; Todd; Robbert; James; Howard; Joann; William; Jeff | 176h | 176h | 6,864 | 6,864 | 6,864 |
| 23 | 3.1.6 | Brief Software Development Team |  | 2d | 2003-03-05 A | 2003-03-07 A | 22 | 100% |  | 2003-12-30 | 2003-12-31 | 2d |  |  | Ken Koch; Ivan Davis; Cynthia Parker; Alan Lundy | 64h | 64h | 1,408 | 1,408 | 1,408 |
| 24 | 3.1.7 | Brief Hardware Development Team |  | 2d | 2003-03-07 A | 2003-03-11 A | 23 | 100% |  | 2004-01-01 | 2004-01-02 | 2d |  |  | Ken Koch; Ivan Davis; Cynthia Parker; Alan Lundy | 64h | 64h | 1,408 | 1,408 | 1,408 |
| 25 | 3.1.8 | Place purchases for the hardware and software components |  | 2w | 2003-03-11 A | 2003-03-25 A | 24 | 100% |  |  |  |  |  |  | Software Component Puchases; Seven new DaVaR Hardware Purchases at $31875 dollars each plus tax |  |  | 898,089 |  | 898,089 |
| 26 | 3.2 | Finished with Design Part of Execution Phase | milestone | 0d | 2003-03-25 A | 2003-03-25 A | 24, 25 | 100% |  |  |  |  |  | start no earlier than 2003-07-25 |  |  |  |  |  |  |

| ID | WBS | Task | Type | Duration | Start | Finish | Predecessors | Complete | Remaining | Baseline start | Baseline finish | Baseline duration | Total slack | Free slack | Constraint | Resources | Work | Actual work | Cost | Baseline cost | Actual cost |
| --- | --- | --- | --- | --- | --- | --- | --- | --- | --- | --- | --- | --- | --- | --- | --- | --- | --- | --- | --- | --- | --- |
| 27 | 3.3 | **Software execution phase** |  | 76d | 2003-03-25 A | 2003-07-09 A | 11, 26 | 100% |  | 2004-01-05 | 2004-02-27 | 40d |  |  |  |  | 2128h | 2128h | 80,256 | 126,720 | 80,256 |
| 28 | 3.3.1 | Software Design |  | 1.9mo | 2003-03-25 A | 2003-05-16 A | 26 | 100% |  | 2004-01-12 | 2004-02-20 | 1.5mo |  |  | start no earlier than 2003-07-20 | Joe [50%]; Alice [50%]; Fred [50%]; Nancy [50%]; Matt Klump | 912h | 912h | 33,440 | 42,240 | 33,440 |
| 29 | 3.3.2 | Software Development |  | 1.9mo | 2003-05-16 A | 2003-07-09 A | 26, 28 | 100% |  | 2004-01-05 | 2004-02-27 | 2mo |  |  |  | Todd [50%]; Robbert [50%]; Nicholai [50%]; Mike [50%]; Michael [50%]; John [50%]; Matt Klump | 1216h | 1216h | 46,816 | 84,480 | 46,816 |
| 30 | 3.4 | **Hardware execution phase** |  | 76d | 2003-03-25 A | 2003-07-09 A | 26 | 100% |  | 2004-01-05 | 2004-02-27 | 40d |  |  |  |  | 1520h | 1520h | 50,160 | 95,040 | 50,160 |
| 31 | 3.4.1 | Hardware Design |  | 1.9mo | 2003-03-25 A | 2003-05-16 A | 26 | 100% |  | 2004-01-12 | 2004-02-20 | 1.5mo |  |  | start no earlier than 2003-07-20 | James [50%]; Howard [50%]; Evlin [50%]; Joann [50%] | 608h | 608h | 20,064 | 31,680 | 20,064 |
| 32 | 3.4.2 | Hardware Development |  | 1.9mo | 2003-05-16 A | 2003-07-09 A | 26, 31 | 100% |  | 2004-01-05 | 2004-02-27 | 2mo |  |  |  | William [50%]; Jeff [50%]; Richard [50%]; Amy [50%]; Johnathan [50%]; Greg [50%] | 912h | 912h | 30,096 | 63,360 | 30,096 |
| 33 | 3.5 | Finished with Implementation Part of Execution Phase | milestone | 0d | 2003-07-09 A | 2003-07-09 A | 32, 26 | 100% |  |  |  |  |  |  | start no earlier than 2003-09-19 |  |  |  |  |  |  |
| 34 | 3.6 | **Testing execution phase** |  | 109d | 2003-07-09 A | 2003-12-09 A | 30 | 100% |  | 2004-03-01 | 2004-05-21 | 60d |  |  |  |  | 5760h | 5760h | 150,480 | 129,536 | 150,480 |
| 35 | 3.6.1 | Training techs in Super DaVaR use |  | 1w | 2003-07-09 A | 2003-07-16 A | 33 | 100% |  | 2004-03-01 | 2004-03-05 | 1w |  |  |  | Joe; Alice; James; Howard | 160h | 160h | 6,160 | 6,160 | 6,160 |
| 36 | 3.6.2 | Test three central offices in AZ |  | 3mo | 2003-07-16 A | 2003-10-08 A | 33, 35 | 100% |  | 2004-03-01 | 2004-05-21 | 3mo |  |  |  | Mitch; Eric; Gabriel | 1440h | 1440h | 31,680 | 31,680 | 31,680 |
| 37 | 3.6.3 | Test three central offices in UT |  | 3mo | 2003-07-16 A | 2003-10-10 A | 33, 36 | 100% |  | 2004-03-01 | 2004-05-21 | 3mo |  |  | finish no earlier than 2003-10-08 | Scott; James; Nichole | 1440h | 1440h | 31,680 | 31,680 | 31,680 |
| 38 | 3.6.4 | Test three central offices in OR |  | 2.98mo | 2003-07-16 A | 2003-10-14 A | 33, 37 | 100% |  | 2004-03-01 | 2004-05-21 | 3mo |  |  | finish no earlier than 2003-10-08 | Marcus; Mark; Kathy; Matt Klump | 1440h | 1440h | 31,680 | 31,680 | 31,680 |
| 39 | 3.6.5 | Compare test data against FACs database |  | 3d | 2003-10-14 A | 2003-10-17 A |  | 100% |  | 2004-04-16 | 2004-04-20 | 3d |  |  | start no earlier than 2003-10-18 | Joe; Alice; James; Howard | 96h | 96h | 3,696 | 3,696 | 3,696 |
| 40 | 3.6.6 | Repair anomalies and extend trial testing if needed |  | 1.85mo | 2003-10-17 A | 2003-12-09 A | 39 | 100% |  | 2004-04-21 | 2004-05-18 | 1mo |  |  |  | Joe; Alice; James; Howard | 1184h | 1184h | 45,584 | 24,640 | 45,584 |
| 41 | 3.7 | Finished with Testing Part of Execution Phase | milestone | 0d | 2003-12-12 | 2003-12-12 | 38, 37, 36 |  |  |  |  |  | 0d |  | start no earlier than 2003-12-12 |  |  |  |  |  |  |
| 42 | 3.8 | Caculate test trial statistics data |  | 2.5w | 2003-12-12 | 2003-12-30 | 41 |  |  |  |  |  | 0d |  |  | Ken Koch [150%]; Matt Klump [150%] | 300h |  | 6,600 |  |  |
| 43 | 3.9 | Submit test trial deliverables | milestone | 0d | 2003-12-30 | 2003-12-30 | 42 |  |  |  |  |  | 0d |  |  |  |  |  |  |  |  |
| 44 | 3.10 | Complete remaining DaVaR unit upgrades |  | 3.85mo | 2003-12-30 | 2004-04-15 | 34, 43 |  |  | 2004-05-24 | 2004-07-16 | 2mo | 0d |  |  | Joe; Alice; Fred; Nancy; Todd; Robbert; James; Howard; Joann; William; Jeff | 6776h |  | 264,264 | 137,280 |  |
| 45 | 3.11 | Finished with remaining Super DaVaR unit upgrades | milestone | 0d | 2004-04-15 | 2004-04-15 | 44 |  |  |  |  |  | 14d | 0d |  |  |  |  |  |  |  |
| 46 | 3.12 | Train remaining techs and provide support |  | 2mo | 2004-04-15 | 2004-06-10 | 45 |  |  | 2004-07-19 | 2004-09-10 | 2mo | 14d | 0d |  | Joe; Alice; James; Howard | 1280h |  | 49,280 | 49,280 |  |
| 47 | 3.13 | Finished with the Execution Phase | milestone | 0d | 2004-06-10 | 2004-06-10 | 46 |  |  |  |  |  | 14d |  |  |  |  |  |  |  |  |
| 48 | 4 | Controlling |  | 374.5d | 2003-01-09 A | 2004-06-16 | 3 | 64% | 135.5d | 2003-10-29 | 2004-09-10 | 228d? | 10d |  | finish no earlier than 2004-06-16 | Simon | 2996h | 1912h | 65,912 | 40,128 | 42,064 |
| 49 | 5 | Closing |  | 2.7mo | 2004-04-15 | 2004-06-30 | 44 |  |  | 2004-06-14 | 2004-09-07 | 3.1mo | 0d |  |  | Cynthia Parker; Alan Lundy; Ken Koch; Ivan Davis | 1728h |  | 38,016 | 43,648 |  |
| 50 | 6 | Submit the final deliverables | milestone | 0d | 2004-06-30 | 2004-06-30 | 49 |  |  |  |  |  | 0d |  |  |  |  |  |  |  |  |
| 51 | 7 | Project Finished | milestone | 0d | 2004-06-30 | 2004-06-30 | 50 |  |  |  |  |  | 0d |  | start no earlier than 2004-04-22 |  |  |  |  |  |  |
